# planejamento_proj

Schedule from MS Project, 2019-02-05 to 2020-04-20, 5 hours a day, A marks actual dates.

## Calendars

- Padrão: Mon-Fri 09:00-11:30, 12:30-15:00; Sat-Sun off. Exceptions (off unless hours are given): 2019-03-22 09:00-11:30, 12:30-15:00, 18:00-23:00, 2019-03-23 09:00-12:00, 2019-03-25 09:00-12:00, 12:30-15:00, 19:00-23:00, 2019-03-26 09:00-11:30, 12:30-15:00, 18:00-23:00, 2019-03-28 09:00-11:30, 12:30-15:00, 19:00-23:00, 2019-03-29 09:00-11:30, 12:30-15:00, 19:00-22:00, 2019-04-06 09:00-12:00, 13:00-18:00, 2019-04-09 09:00-11:30, 12:30-15:00, 19:00-23:00, 2019-04-13 09:00-12:00, 13:00-18:00 (Sabado de trabalho), 2019-05-18 09:00-12:00 (Sabado de trabalho), 2019-05-25 09:00-12:00, 13:00-18:00 (Sabado de trabalho).

## Schedule

| ID | WBS | Task | Duration | Start | Finish | Complete | Remaining | Baseline start | Baseline finish | Baseline duration | Baseline 1 start | Baseline 1 finish | Total slack | Constraint | Work | Actual work |
| --- | --- | --- | --- | --- | --- | --- | --- | --- | --- | --- | --- | --- | --- | --- | --- | --- |
| 1 | 1 | **Iniciação** | 29d? | 2019-02-05 09:00 A | 2019-03-15 15:00 A | 100% |  | 2019-02-05 09:00 | 2019-02-08 11:00 | 3.4d | 2019-02-05 09:00 | 2019-03-15 15:00 |  |  | 4h | 4h |
| 2 | 1.1 | **Definição de escopo** | 0.4d | 2019-02-08 09:00 A | 2019-02-08 11:00 A | 100% |  | 2019-02-08 09:00 | 2019-02-08 11:00 | 0.4d | 2019-02-08 09:00 | 2019-02-08 11:00 |  |  | 3h | 3h |
| 3 | 1.1.1 | numero de fases(11) | 0.2d | 2019-02-08 09:00 A | 2019-02-08 10:00 A | 100% |  | 2019-02-08 09:00 | 2019-02-08 10:00 | 0.2d | 2019-02-08 09:00 | 2019-02-08 10:00 |  | start no earlier than 2019-02-08 09:00 | 1h | 1h |
| 4 | 1.1.2 | Mecanicas | 0.4d | 2019-02-08 09:00 A | 2019-02-08 11:00 A | 100% |  | 2019-02-08 09:00 | 2019-02-08 11:00 | 0.4d | 2019-02-08 09:00 | 2019-02-08 11:00 |  |  | 2h | 2h |
| 5 | 1.2 | Objetivos | 1.6d | 2019-02-05 09:00 A | 2019-02-06 13:00 A | 100% |  | 2019-02-05 09:00 | 2019-02-06 13:00 | 1.6d | 2019-02-05 09:00 | 2019-02-06 13:00 |  |  |  |  |
| 6 | 1.3 | Pesquisa de Mercado | 0.5d? | 2019-03-15 12:30 A | 2019-03-15 15:00 A | 100% |  |  |  |  | 2019-03-15 12:30 | 2019-03-15 15:00 |  | start no earlier than 2019-03-15 12:30 | 1h | 1h |
| 7 | 2 | **Planejamento** | 71.9d? | 2019-02-05 09:00 A | 2019-05-02 15:00 | 98% | 1.58d? | 2019-02-05 09:00 | 2019-03-22 15:00 | 35.6d? | 2019-02-05 09:00 | 2019-03-29 15:00 | 254.2d |  | 8.3h | 7.8h |
| 8 | 2.1 | Mecanicas | 0.4d? | 2019-02-05 09:00 A | 2019-02-05 11:00 A | 100% |  | 2019-02-05 09:00 | 2019-02-05 11:00 | 0.4d? | 2019-02-05 09:00 | 2019-02-05 11:00 |  | finish no earlier than 2019-02-13 15:00 | 2h | 2h |
| 9 | 2.2 | Tela de Opções | 0.2d? | 2019-03-01 09:00 A | 2019-03-01 10:00 A | 100% |  | 2019-03-01 09:00 | 2019-03-01 10:00 | 0.2d? | 2019-03-01 09:00 | 2019-03-01 10:00 |  | finish no earlier than 2019-03-06 15:00 | 1h | 1h |
| 10 | 2.3 | Menu de Titulo | 0.2d? | 2019-03-05 09:00 A | 2019-03-05 10:00 A | 100% |  | 2019-03-05 09:00 | 2019-03-05 10:00 | 0.2d? | 2019-03-05 09:00 | 2019-03-05 10:00 |  | finish no earlier than 2019-03-07 15:00 | 1h | 1h |
| 11 | 2.4 | planejamento do Game Loop | 0.25d? | 2019-03-05 09:00 A | 2019-03-05 10:15 A | 100% |  | 2019-03-05 09:00 | 2019-03-05 10:15 | 0.25d? | 2019-03-05 09:00 | 2019-03-05 10:15 |  | finish no earlier than 2019-03-13 15:00 | 1.25h | 1.25h |
| 12 | 2.5 | **planejamento da Área 1** | 11.3d? | 2019-03-21 09:00 A | 2019-03-29 15:00 A | 100% |  | 2019-03-22 09:00 | 2019-03-22 15:00 | 1d? | 2019-03-21 09:00 | 2019-03-29 15:00 |  |  | 0.3h | 0.3h |
| 13 | 2.5.1 | Tutorial | 1d? | 2019-03-21 09:00 A | 2019-03-21 15:00 A | 100% |  |  |  |  | 2019-03-21 09:00 | 2019-03-21 15:00 |  | finish no earlier than 2019-03-21 15:00 |  |  |
| 14 | 2.5.2 | escolha do tema | 7d? | 2019-03-21 09:00 A | 2019-03-29 15:00 A | 100% |  |  |  |  | 2019-03-21 09:00 | 2019-03-29 15:00 |  | finish no earlier than 2019-03-29 15:00 |  |  |
| 15 | 2.5.3 | NPCs | 7d? | 2019-03-21 09:00 A | 2019-03-29 15:00 A | 100% |  |  |  |  | 2019-03-21 09:00 | 2019-03-29 15:00 |  | finish no earlier than 2019-03-29 15:00 |  |  |
| 16 | 2.5.4 | Itens Disponiveis | 0.5d? | 2019-03-22 12:30 A | 2019-03-22 15:00 A | 100% |  |  |  |  | 2019-03-21 09:00 | 2019-03-29 15:00 |  | start no earlier than 2019-03-22 12:30 | 0.15h | 0.15h |
| 17 | 2.5.5 | Inimigos | 0.5d? | 2019-03-22 12:30 A | 2019-03-22 15:00 A | 100% |  |  |  |  | 2019-03-21 09:00 | 2019-03-29 15:00 |  | start no earlier than 2019-03-22 12:30 | 0.15h | 0.15h |
| 18 | 2.5.6 | Chefe | 7d? | 2019-03-21 09:00 A | 2019-03-29 15:00 A | 100% |  |  |  |  | 2019-03-21 09:00 | 2019-03-29 15:00 |  | finish no earlier than 2019-03-29 15:00 |  |  |
| 19 | 2.5.7 | Caminhos bloqueados por habilidades | 7d? | 2019-03-21 09:00 A | 2019-03-29 15:00 A | 100% |  |  |  |  | 2019-03-21 09:00 | 2019-03-29 15:00 |  | finish no earlier than 2019-03-29 15:00 |  |  |
| 20 | 2.6 | **planejamento da Área 2** | 0.5d? | 2019-05-02 12:30 A | 2019-05-02 15:00 | 75% | 0.12d? |  |  |  |  |  | 254.2d |  | 2.75h | 2.25h |
| 21 | 2.6.1 | escolha do Tema | 0.5d? | 2019-05-02 12:30 A | 2019-05-02 15:00 A | 100% |  |  |  |  |  |  |  | start no earlier than 2019-05-02 12:30 | 0.25h | 0.25h |
| 22 | 2.6.2 | NPCs | 0.5d? | 2019-05-02 12:30 A | 2019-05-02 15:00 | 50% | 0.25d? |  |  |  |  |  | 254.2d | start no earlier than 2019-05-02 12:30 | 0.5h | 0.25h |
| 23 | 2.6.3 | Itens Disponiveis | 0.5d? | 2019-05-02 12:30 A | 2019-05-02 15:00 A | 100% |  |  |  |  |  |  |  | start no earlier than 2019-05-02 12:30 | 1h | 1h |
| 24 | 2.6.4 | Inimigos | 0.5d? | 2019-05-02 12:30 A | 2019-05-02 15:00 A | 100% |  |  |  |  |  |  |  | start no earlier than 2019-05-02 12:30 | 0.5h | 0.5h |
| 25 | 2.6.5 | Chefe | 0.5d? | 2019-05-02 12:30 A | 2019-05-02 15:00 A | 100% |  |  |  |  |  |  |  | start no earlier than 2019-05-02 12:30 | 0.25h | 0.25h |
| 26 | 2.6.6 | Caminhos bloqueados por habilidades | 0.5d? | 2019-05-02 12:30 | 2019-05-02 15:00 |  |  |  |  |  |  |  | 252d | start no earlier than 2019-05-02 12:30 | 0.25h |  |

Notes:
- 2: O jogo é baseado em upgrades que dão acesso a novas áreas do game / Conteudo: / Estão projetados 11 fases cada uma com um chefe principal e inimigos únicos. As fases podem ter chefes secundários e minichefes. / As mecanicas estão descritas no capitulo 2[planejamento]. / Adicionais: / Estão projetados como adicionais, sistema de recompensa diaria, vídeo recompensado / Upgrades: / Espadas Multicoloridas, abrem barreiras em concordância com as cores das espadas. / magicAttack / DoubleJump / DownArrowMagicAttack / DashMovement / data de entrega estimada: / 28/06/2019 / Prioridade do projeto: / baixa
- 4: Espadas Multicoloridas, abrem barreiras em concordância com as cores das espadas. / magicAttack / DoubleJump / DownArrowMagicAttack / DashMovement
- 5: Defina os objetivos do projeto com relação ao problema de negócios. Descreva quais imperativos de missão/estratégicos de nível mais alto são atendidos com a execução desse projeto. / Declaração de objetivo do projeto: / Criar um jogo no gênero plataforma 2D com subgênero metroidevania / lançar inicialmente para aparelhos android / lançar posteriormente para PC via Steam ou GameJolt/itch.io / lançar posteriormente para N3DS / Métricas de sucesso: / superar mil instalações em aparelhos android / Comparação de estado atual com estado futuro: / Estado atualEstado futuro / Mecanica basica implementada,faltam movimentos especiaisJogo completo com fases e chefes
- 8: O jogador pode realizar as seguintes ações ao iniciar o jogo: / Andar / Pular / Atacar / Recuperar sua energia com uso de mana / Atacar para cima / Atacar para baixo e pra cima durante o pulo / Atacar durante o pulo / Essas ações são realizadas no dispositivos androide por meio de controles dispostos na tela. / A movimentação é feita com uma alavanca virtual disposta na tela do dispositivo android. / O pulo e o ataque são executados pressionando botões posicionados na tela do dispositivo android. / A energia pode ser recuperada segurando um botão disposto na tela do aparelho. / Colocando a alavanca para cima e pressionando ataque o personagem ataca pra cima. / No ar colocando a alavanca pra baixo e pressionando ataque ele ataca pra baixo, colocando a alavanca pra cima e pressionando ataque o personagem ataca pra cima no ar e pressionando ataque sem colocar pra cima ou pra baixo é executado o ataque comum no ar. / Upgrade: / Durante o jogo o personagem aprende upgrades que possibilitam o acesso a novas áreas, estes são: / Pulo duplo / Movimento de dash / Magia / Descida em flecha magica / Espadas multicoloridas (estas abrem barreiras particulares relacionadas as cores das espadas)
- 9: planejamento da tela de Opções com a previsão de implementações / Iniciar Jogo / opções / idioma / créditos / ---> iniciar jogo[baseado em hollow knight] / load game/new game/delete game / -->opções / volume musica / volume sound effects / ---> idioma / pt-br / en-google / ---> creditos / eu mesmo / RPG Maker for Music[será que pode?]
- 10: planejamento dos Menus / Inventario / Emblemas / Mapa / [talvez...] Bestiario / --->Inventario / Updates / Coletáveis / [talvez] Dinheiro / --->Emblemas / numero de encaixes / emblemas disponíveis e suas descrições / --->Mapa / Necessário um bom planejamento, decidir se usar modelo hollow knight ou SOTN/metroid

| ID | WBS | Task | Duration | Start | Finish | Predecessors | Complete | Remaining | Baseline start | Baseline finish | Baseline duration | Baseline 1 start | Baseline 1 finish | Total slack | Free slack | Constraint | Work | Actual work |
| --- | --- | --- | --- | --- | --- | --- | --- | --- | --- | --- | --- | --- | --- | --- | --- | --- | --- | --- |
| 27 | 3 | **Desenvolvimento** | 311.1d? | 2019-02-15 09:00 A | 2020-04-09 15:00 |  | 34% | 204.54d? | 2019-02-15 09:00 | 2019-06-05 15:00 | 80.6d? | 2019-02-15 09:00 | 2019-06-05 15:00 | 7d | 0d |  | 200.45h | 198.88h |
| 28 | 3.1 | **Mecanica Central** | 10.2d? | 2019-02-15 09:00 A | 2019-03-01 10:00 A | 8 | 100% |  | 2019-02-15 09:00 | 2019-03-01 10:00 | 10.2d? | 2019-02-15 09:00 | 2019-03-01 10:00 |  |  |  | 20.5h | 20.5h |
| 29 | 3.1.1 | Movimentação | 1.6d? | 2019-02-15 09:00 A | 2019-02-18 13:00 A |  | 100% |  | 2019-02-15 09:00 | 2019-02-18 13:00 | 1.6d? | 2019-02-15 09:00 | 2019-02-18 13:00 |  |  | finish no earlier than 2019-02-20 15:00 | 8h | 8h |
| 30 | 3.1.2 | Pulo | 0.8d? | 2019-02-21 09:00 A | 2019-02-21 14:00 A | 29 | 100% |  | 2019-02-21 09:00 | 2019-02-21 14:00 | 0.8d? | 2019-02-21 09:00 | 2019-02-21 14:00 |  |  | finish no earlier than 2019-02-22 15:00 | 4h | 4h |
| 31 | 3.1.3 | Magic Regen | 0.4d? | 2019-02-26 09:00 A | 2019-02-26 11:00 A | 30 | 100% |  | 2019-02-26 09:00 | 2019-02-26 11:00 | 0.4d? | 2019-02-26 09:00 | 2019-02-26 11:00 |  |  | finish no earlier than 2019-02-25 15:00 | 2h | 2h |
| 32 | 3.1.4 | Magic Attack | 0.4d? | 2019-02-26 09:00 A | 2019-02-26 11:00 A | 30 | 100% |  | 2019-02-26 09:00 | 2019-02-26 11:00 | 0.4d? | 2019-02-26 09:00 | 2019-02-26 11:00 |  |  |  | 2h | 2h |
| 33 | 3.1.5 | Magic Down Arrow | 0.25d? | 2019-02-27 09:00 A | 2019-02-27 10:15 A | 30 | 100% |  | 2019-02-27 09:00 | 2019-02-27 10:15 | 0.25d? | 2019-02-27 09:00 | 2019-02-27 10:15 |  |  | start no earlier than 2019-02-27 09:00 | 1.25h | 1.25h |
| 34 | 3.1.6 | Dash Movement | 0.25d? | 2019-02-28 09:00 A | 2019-02-28 10:15 A | 30 | 100% |  | 2019-02-28 09:00 | 2019-02-28 10:15 | 0.25d? | 2019-02-28 09:00 | 2019-02-28 10:15 |  |  |  | 1.25h | 1.25h |
| 35 | 3.1.7 | Double Jump | 0.2d? | 2019-03-01 09:00 A | 2019-03-01 10:00 A | 30 | 100% |  | 2019-03-01 09:00 | 2019-03-01 10:00 | 0.2d? | 2019-03-01 09:00 | 2019-03-01 10:00 |  |  | start no earlier than 2019-03-01 09:00 | 1h | 1h |
| 36 | 3.1.8 | espadas multi coloridas | 0.2d? | 2019-03-01 09:00 A | 2019-03-01 10:00 A | 30 | 100% |  | 2019-03-01 09:00 | 2019-03-01 10:00 | 0.2d? | 2019-03-01 09:00 | 2019-03-01 10:00 |  |  | start no earlier than 2019-02-01 09:00 | 1h | 1h |
| 37 | 3.2 | **Menu Inicial** | 4.15d? | 2019-03-04 09:00 A | 2019-03-08 09:45 A | 10 | 100% |  | 2019-03-04 09:00 | 2019-03-08 09:45 | 4.15d? | 2019-03-04 09:00 | 2019-03-08 09:45 |  |  |  | 8.5h | 8.5h |
| 38 | 3.2.1 | Menu de Introdução ao jogo | 0.1d? | 2019-03-04 09:00 A | 2019-03-04 09:30 A |  | 100% |  | 2019-03-04 09:00 | 2019-03-04 09:30 | 0.1d? | 2019-03-04 09:00 | 2019-03-04 09:30 |  |  | start no earlier than 2019-03-04 09:00 | 0.5h | 0.5h |
| 39 | 3.2.2 | Opções no titulo | 0.2d? | 2019-03-04 09:00 A | 2019-03-04 10:00 A |  | 100% |  | 2019-03-04 09:00 | 2019-03-04 10:00 | 0.2d? | 2019-03-04 09:00 | 2019-03-04 10:00 |  |  | start no earlier than 2019-03-04 09:00 | 1h | 1h |
| 40 | 3.2.3 | Aparencia transitoria do menu novo jogo carregar deletar | 0.2d? | 2019-03-05 09:00 A | 2019-03-05 10:00 A |  | 100% |  | 2019-03-05 09:00 | 2019-03-05 10:00 | 0.2d? | 2019-03-05 09:00 | 2019-03-05 10:00 |  |  | start no earlier than 2019-03-05 09:00 | 1h | 1h |
| 41 | 3.2.4 | aparencia transitoria do menu de idiomas | 0.2d? | 2019-03-07 09:00 A | 2019-03-07 10:00 A |  | 100% |  | 2019-03-07 09:00 | 2019-03-07 10:00 | 0.2d? | 2019-03-07 09:00 | 2019-03-07 10:00 |  |  | start no earlier than 2019-03-07 09:00 | 1h | 1h |
| 42 | 3.2.5 | aparencia transitoria do menu de creditos | 0.15d? | 2019-03-08 09:00 A | 2019-03-08 09:45 A |  | 100% |  | 2019-03-08 09:00 | 2019-03-08 09:45 | 0.15d? | 2019-03-08 09:00 | 2019-03-08 09:45 |  |  | start no earlier than 2019-03-08 09:00 | 0.75h | 0.75h |
| 43 | 3.2.6 | funcionalidades do menu iniciar/carregar/deletar | 0.4d? | 2019-03-06 09:00 A | 2019-03-06 11:00 A | 40 | 100% |  | 2019-03-06 09:00 | 2019-03-06 11:00 | 0.4d? | 2019-03-06 09:00 | 2019-03-06 11:00 |  |  | start no earlier than 2019-03-06 09:00 | 2h | 2h |
| 44 | 3.2.7 | funcionalidades do menu de opções | 0.15d? | 2019-03-08 09:00 A | 2019-03-08 09:45 A |  | 100% |  | 2019-03-08 09:00 | 2019-03-08 09:45 | 0.15d? | 2019-03-08 09:00 | 2019-03-08 09:45 |  |  | start no earlier than 2019-03-08 09:00 | 0.75h | 0.75h |
| 45 | 3.2.8 | funcionalidades do menu de idiomas | 0.15d? | 2019-03-08 09:00 A | 2019-03-08 09:45 A | 41 | 100% |  | 2019-03-08 09:00 | 2019-03-08 09:45 | 0.15d? | 2019-03-08 09:00 | 2019-03-08 09:45 |  |  | start no earlier than 2019-02-08 09:00 | 0.75h | 0.75h |
| 46 | 3.2.9 | funcionalidades do menu de creditos | 0.15d? | 2019-03-08 09:00 A | 2019-03-08 09:45 A | 42 | 100% |  | 2019-03-08 09:00 | 2019-03-08 09:45 | 0.15d? | 2019-03-08 09:00 | 2019-03-08 09:45 |  |  | start no earlier than 2019-02-08 09:00 | 0.75h | 0.75h |
| 47 | 3.3 | **Gerenciamento de dados do jogo(Game Loop)** | 5.4d? | 2019-03-06 09:00 A | 2019-03-13 11:00 A |  | 100% |  | 2019-03-06 09:00 | 2019-03-13 11:00 | 7d? | 2019-03-06 09:00 | 2019-03-13 11:00 |  |  |  | 11.5h | 11.5h |
| 48 | 3.3.1 | Keyvars | 0.55d? | 2019-03-06 09:00 A | 2019-03-06 12:45 A |  | 100% |  | 2019-03-06 09:00 | 2019-03-06 12:45 | 0.55d? | 2019-03-06 09:00 | 2019-03-06 12:45 |  |  | start no earlier than 2019-03-06 09:00 | 2.75h | 2.75h |
| 49 | 3.3.2 | SceneLoader | 0.2d? | 2019-03-07 09:00 A | 2019-03-07 10:00 A |  | 100% |  | 2019-03-07 09:00 | 2019-03-07 10:00 | 0.2d? | 2019-03-07 09:00 | 2019-03-07 10:00 |  |  | finish no earlier than 2019-03-08 15:00 | 1h | 1h |
| 50 | 3.3.3 | changeSceneInLoader | 0.35d? | 2019-03-07 09:00 A | 2019-03-07 10:45 A |  | 100% |  | 2019-03-07 09:00 | 2019-03-07 10:45 | 0.35d? | 2019-03-07 09:00 | 2019-03-07 10:45 |  |  | finish no earlier than 2019-03-08 15:00 | 1.75h | 1.75h |
| 51 | 3.3.4 | sistema de check point | 0.2d? | 2019-03-08 09:00 A | 2019-03-08 10:00 A |  | 100% |  | 2019-03-08 09:00 | 2019-03-08 10:00 | 0.2d? | 2019-03-08 09:00 | 2019-03-08 10:00 |  |  | finish no earlier than 2019-03-09 15:00 | 1h | 1h |
| 52 | 3.3.5 | sistema de inimigos se recuperando ao usar check point | 0.2d? | 2019-03-11 09:00 A | 2019-03-11 10:00 A |  | 100% |  | 2019-03-11 09:00 | 2019-03-11 10:00 | 0.2d? | 2019-03-11 09:00 | 2019-03-11 10:00 |  |  | finish no earlier than 2019-03-11 15:00 | 1h | 1h |
| 53 | 3.3.6 | lockCameraInScene | 0.1d? | 2019-03-11 09:00 A | 2019-03-11 09:30 A |  | 100% |  | 2019-03-11 09:00 | 2019-03-11 09:30 | 0.1d? | 2019-03-11 09:00 | 2019-03-11 09:30 |  |  | start no earlier than 2019-03-11 09:00 | 0.5h | 0.5h |
| 54 | 3.3.7 | ChangeSceneInGame | 0.3d? | 2019-03-12 09:00 A | 2019-03-12 10:30 A |  | 100% |  | 2019-03-12 09:00 | 2019-03-12 10:30 | 0.3d? | 2019-03-12 09:00 | 2019-03-12 10:30 |  |  | start no earlier than 2019-03-12 09:00 | 1.5h | 1.5h |
| 55 | 3.3.8 | implementação dos dados do inventario | 0.4d? | 2019-03-13 09:00 A | 2019-03-13 11:00 A |  | 100% |  | 2019-03-13 09:00 | 2019-03-13 11:00 | 0.4d? | 2019-03-13 09:00 | 2019-03-13 11:00 |  |  | start no earlier than 2019-03-13 09:00 | 2h | 2h |

| ID | WBS | Task | Duration | Start | Finish | Predecessors | Complete | Actual start | Actual finish | Baseline start | Baseline finish | Baseline duration | Baseline 1 start | Baseline 1 finish | Constraint | Work | Actual work |
| --- | --- | --- | --- | --- | --- | --- | --- | --- | --- | --- | --- | --- | --- | --- | --- | --- | --- |
| 56 | 3.4 | **Menu de Pause** | 5d? | 2019-03-14 09:00 A | 2019-03-20 15:00 A |  | 100% |  |  | 2019-03-14 09:00 | 2019-03-20 15:00 | 5d? | 2019-03-14 09:00 | 2019-03-20 15:00 |  | 12.5h | 12.5h |
| 57 | 3.4.1 | aparencia transitoria do menu de opções de pause | 1d? | 2019-03-14 09:00 A | 2019-03-14 15:00 A |  | 100% |  |  | 2019-03-14 09:00 | 2019-03-14 15:00 | 1d? | 2019-03-14 09:00 | 2019-03-14 15:00 | start no earlier than 2019-03-14 09:00 | 0.5h | 0.5h |
| 58 | 3.4.2 | aparencia transitoria do menu de emblemas | 1d? | 2019-03-14 09:00 A | 2019-03-14 15:00 A |  | 100% |  |  | 2019-03-14 09:00 | 2019-03-14 15:00 | 1d? | 2019-03-14 09:00 | 2019-03-14 15:00 | start no earlier than 2019-03-14 09:00 | 0.5h | 0.5h |
| 59 | 3.4.3 | aparencia transitoria do espaço do mapa | 1d? | 2019-03-14 09:00 A | 2019-03-14 15:00 A |  | 100% |  |  | 2019-03-14 09:00 | 2019-03-14 15:00 | 1d? | 2019-03-14 09:00 | 2019-03-14 15:00 | start no earlier than 2019-03-14 09:00 | 0.5h | 0.5h |
| 60 | 3.4.4 | aparencia transitoria do menu de updates | 1d? | 2019-03-14 09:00 A | 2019-03-14 15:00 A |  | 100% |  |  | 2019-03-14 09:00 | 2019-03-14 15:00 | 1d? | 2019-03-14 09:00 | 2019-03-14 15:00 | start no earlier than 2019-03-14 09:00 | 0.25h | 0.25h |
| 61 | 3.4.5 | aparencia transitoria do menu de hexagonos e pentagonos | 1d? | 2019-03-14 09:00 A | 2019-03-14 15:00 A |  | 100% |  |  | 2019-03-14 09:00 | 2019-03-14 15:00 | 1d? | 2019-03-14 09:00 | 2019-03-14 15:00 | start no earlier than 2019-03-14 09:00 | 0.25h | 0.25h |
| 62 | 3.4.6 | funcionalidades do menu de opções de pause | 0.5d? | 2019-03-15 09:00 A | 2019-03-15 11:30 A | 57 | 100% |  |  | 2019-03-15 09:00 | 2019-03-15 15:00 | 1d? | 2019-03-15 09:00 | 2019-03-15 11:30 | start no earlier than 2019-03-15 09:00 | 0.5h | 0.5h |
| 63 | 3.4.7 | funcionalidades do menu de updates | 1d? | 2019-03-15 09:00 A | 2019-03-18 11:30 A | 60 | 100% |  |  | 2019-03-15 09:00 | 2019-03-18 15:00 | 2d? | 2019-03-15 09:00 | 2019-03-18 11:30 | finish no earlier than 2019-03-18 15:00 | 1h | 1h |
| 64 | 3.4.8 | funcionalidades do menu de emblemas | 3.4d? | 2019-03-18 09:00 A | 2019-03-19 23:00 A | 58 | 100% |  |  | 2019-03-19 09:00 | 2019-03-19 15:00 | 1d? | 2019-03-18 09:00 | 2019-03-19 23:00 | start no earlier than 2019-03-18 09:00 | 7h | 7h |
| 65 | 3.4.9 | funcionalidades do menu de hexagonos e pentagonos | 0.5d? | 2019-03-20 09:00 A | 2019-03-20 11:30 A | 61 | 100% |  |  | 2019-03-19 09:00 | 2019-03-20 15:00 | 2d? | 2019-03-20 09:00 | 2019-03-20 11:30 | start no earlier than 2019-03-20 09:00 | 1h | 1h |
| 66 | 3.4.10 | funcionalidades gerais do menu de pause | 4.9d? | 2019-03-15 09:00 A | 2019-03-20 15:00 A |  | 100% |  |  | 2019-03-15 09:00 | 2019-03-20 15:00 | 4d? | 2019-03-15 09:00 | 2019-03-20 15:00 |  | 1h | 1h |
| 67 | 3.5 | **Área 1** | 39.9d? | 2019-03-20 09:00 A | 2019-05-01 15:00 A |  | 100% |  |  | 2019-03-20 09:00 | 2019-03-27 15:00 | 6d? | 2019-03-20 09:00 | 2019-04-03 15:00 |  | 80.5h | 80.5h |
| 68 | 3.5.1 | implementação do tutorial | 2.5d? | 2019-03-20 09:00 A | 2019-03-22 11:30 A |  | 100% |  |  |  |  |  | 2019-03-20 09:00 | 2019-03-22 11:30 | finish no earlier than 2019-03-21 15:00 | 5.5h | 5.5h |
| 69 | 3.5.2 | **implementação dos Inimigos** | 13.9d | 2019-03-22 09:00 | 2019-04-03 15:00 |  | 100% | 2019-03-26 12:30 | 2019-04-06 18:00 |  |  |  | 2019-03-22 09:00 | 2019-04-03 15:00 |  | 18.75h | 18.75h |
| 70 | 3.5.2.1 | O que Acelera | 1.5d? | 2019-03-26 12:30 A | 2019-03-26 23:00 A |  | 100% |  |  |  |  |  | 2019-03-22 09:00 | 2019-04-03 15:00 | start no earlier than 2019-03-26 12:30 | 2h | 2h |
| 71 | 3.5.2.2 | Investidor | 1d? | 2019-03-26 18:00 A | 2019-03-26 23:00 A |  | 100% |  |  |  |  |  | 2019-03-22 09:00 | 2019-04-03 15:00 | start no earlier than 2019-03-26 18:00 | 0.5h | 0.5h |
| 72 | 3.5.2.3 | Estocador | 0.5d? | 2019-04-05 09:00 A | 2019-04-05 11:30 A |  | 100% |  |  |  |  |  | 2019-03-22 09:00 | 2019-04-03 15:00 | start no earlier than 2019-04-05 09:00 | 0.5h | 0.5h |
| 73 | 3.5.2.4 | pulador | 1d? | 2019-03-26 18:00 A | 2019-03-26 23:00 A |  | 100% |  |  |  |  |  | 2019-03-22 09:00 | 2019-04-03 15:00 | start no earlier than 2019-03-26 18:00 | 1h | 1h |
| 74 | 3.5.2.5 | circulador | 0.5d? | 2019-03-27 09:00 A | 2019-03-27 11:30 A |  | 100% |  |  |  |  |  | 2019-03-22 09:00 | 2019-04-03 15:00 | start no earlier than 2019-03-27 09:00 | 0.25h | 0.25h |
| 75 | 3.5.2.6 | atirador | 0.5d? | 2019-03-29 12:30 A | 2019-03-29 15:00 A |  | 100% |  |  |  |  |  | 2019-03-22 09:00 | 2019-04-03 15:00 | start no earlier than 2019-03-29 12:30 | 3h | 3h |
| 76 | 3.5.2.7 | reprodutor | 0.5d? | 2019-04-03 09:00 A | 2019-04-03 11:30 A |  | 100% |  |  |  |  |  | 2019-03-22 09:00 | 2019-04-03 15:00 | start no earlier than 2019-04-03 09:00 | 0.5h | 0.5h |
| 77 | 3.5.2.8 | fortão | 1d? | 2019-04-01 09:00 A | 2019-04-01 15:00 A |  | 100% |  |  |  |  |  | 2019-03-22 09:00 | 2019-04-03 15:00 | start no earlier than 2019-04-01 09:00 | 3.5h | 3.5h |
| 78 | 3.5.2.9 | defensor | 1.6d? | 2019-04-06 09:00 A | 2019-04-06 18:00 A |  | 100% |  |  |  |  |  | 2019-03-22 09:00 | 2019-04-03 15:00 | start no earlier than 2019-04-06 09:00 | 3h | 3h |
| 79 | 3.5.2.10 | voador perseguidor | 0.8d? | 2019-03-28 19:00 A | 2019-03-28 23:00 A |  | 100% |  |  |  |  |  | 2019-03-22 09:00 | 2019-04-03 15:00 | start no earlier than 2019-03-28 19:00 | 2h | 2h |
| 80 | 3.5.2.11 | voador zig zag | 1d? | 2019-03-27 09:00 A | 2019-03-27 15:00 A |  | 100% |  |  |  |  |  | 2019-03-22 09:00 | 2019-04-03 15:00 | start no earlier than 2019-03-27 09:00 | 2.5h | 2.5h |
| 81 | 3.5.3 | implementação do chefe | 4.8d? | 2019-04-09 09:00 A | 2019-04-12 15:00 A |  | 100% |  |  |  |  |  | 2019-03-21 09:00 | 2019-04-03 15:00 | start no earlier than 2019-04-09 09:00 | 8.5h | 8.5h |
| 82 | 3.5.4 | posicionamento e implementação de itens | 2.6d? | 2019-03-23 09:00 A | 2019-04-23 11:30 A |  | 100% |  |  |  |  |  | 2019-03-21 09:00 | 2019-04-03 15:00 | start no earlier than 2019-03-23 09:00 | 5h | 5h |
| 83 | 3.5.5 | implementação das bareriras por habilidades | 10d? | 2019-03-22 11:00 A | 2019-04-03 15:00 A |  | 100% |  |  |  |  |  | 2019-03-21 09:00 | 2019-04-03 15:00 | finish no earlier than 2019-04-03 15:00 |  |  |
| 84 | 3.5.6 | criação dos tiles e artes | 1.5d | 2019-03-21 09:00 A | 2019-04-02 11:30 A |  | 100% |  |  |  |  |  | 2019-03-21 09:00 | 2019-03-21 15:00 | start no earlier than 2019-03-21 09:00 | 1.25h | 1.25h |

| ID | WBS | Task | Duration | Start | Finish | Predecessors | Complete | Actual start | Actual finish | Baseline 1 start | Baseline 1 finish | Constraint | Work | Actual work |
| --- | --- | --- | --- | --- | --- | --- | --- | --- | --- | --- | --- | --- | --- | --- |
| 85 | 3.5.7 | **Construção do Cenario** | 23.3d? | 2019-03-21 12:30 A | 2019-04-12 11:30 A |  | 100% |  |  | 2019-03-21 12:30 | 2019-04-03 15:00 |  | 35h | 35h |
| 86 | 3.5.7.1 | Area do tutorial | 0.5d? | 2019-03-21 12:30 A | 2019-03-21 15:00 A |  | 100% |  |  | 2019-03-21 12:30 | 2019-03-21 15:00 | start no earlier than 2019-03-21 12:30 | 0.25h | 0.25h |
| 87 | 3.5.7.2 | Área do primeiro checkPoint | 2d? | 2019-03-21 12:30 A | 2019-03-22 23:00 A |  | 100% |  |  | 2019-03-21 12:30 | 2019-03-22 11:30 | start no earlier than 2019-03-21 12:30 | 2.25h | 2.25h |
| 88 | 3.5.7.3 | Area do Tyron | 3.2d? | 2019-03-22 19:00 A | 2019-03-25 23:00 A |  | 100% |  |  | 2019-03-22 09:00 | 2019-03-25 15:00 | start no earlier than 2019-03-22 19:00 | 7.5h | 7.5h |
| 89 | 3.5.7.4 | Primeira Área do subsolo | 2d? | 2019-03-26 09:00 A | 2019-03-26 23:00 A |  | 100% |  |  | 2019-03-25 09:00 | 2019-03-26 15:00 | start no earlier than 2019-03-26 09:00 | 2.5h | 2.5h |
| 90 | 3.5.7.5 | Area da grande descida | 0.5d? | 2019-03-27 09:00 A | 2019-03-27 11:30 A |  | 100% |  |  | 2019-03-26 09:00 | 2019-03-27 15:00 | start no earlier than 2019-03-27 09:00 | 1.25h | 1.25h |
| 91 | 3.5.7.6 | Area dos Losangulos Perdidos | 0.5d? | 2019-03-28 12:30 A | 2019-03-28 15:00 A |  | 100% |  |  | 2019-03-27 09:00 | 2019-03-27 15:00 | start no earlier than 2019-03-28 12:30 | 3h | 3h |
| 92 | 3.5.7.7 | SubArea indice 8 | 0.8d? | 2019-03-28 12:30 A | 2019-03-28 23:00 A |  | 100% |  |  | 2019-03-27 09:00 | 2019-03-27 15:00 | start no earlier than 2019-03-28 19:00 | 1.75h | 1.75h |
| 93 | 3.5.7.8 | Subarea indice22 | 0.8d? | 2019-03-28 19:00 A | 2019-03-28 23:00 A |  | 100% |  |  | 2019-03-27 09:00 | 2019-03-27 15:00 | start no earlier than 2019-03-28 19:00 | 1.25h | 1.25h |
| 94 | 3.5.7.9 | subArea indice 9 | 1.1d? | 2019-03-29 09:00 A | 2019-03-29 22:00 A |  | 100% |  |  | 2019-03-27 09:00 | 2019-03-28 15:00 | start no earlier than 2019-03-29 09:00 | 4h | 4h |
| 95 | 3.5.7.10 | subArea indice10 - OCheckPoint Intermediario | 0.6d? | 2019-03-29 19:00 A | 2019-03-29 22:00 A |  | 100% |  |  | 2019-03-28 09:00 | 2019-03-28 15:00 | start no earlier than 2019-03-29 19:00 | 1h | 1h |
| 96 | 3.5.7.11 | subArea indice 11 - Obstaculos | 0.5d? | 2019-04-01 12:30 A | 2019-04-01 15:00 A |  | 100% |  |  | 2019-03-28 09:00 | 2019-03-28 15:00 | start no earlier than 2019-04-01 12:30 | 1h | 1h |
| 97 | 3.5.7.12 | subArea indice 12 - Obstaculos continuam | 0.5d? | 2019-04-02 09:00 A | 2019-04-02 11:30 A |  | 100% |  |  | 2019-03-29 09:00 | 2019-03-29 15:00 | start no earlier than 2019-04-02 09:00 | 2h | 2h |
| 98 | 3.5.7.13 | Sub Area a grande subida | 0.5d? | 2019-04-03 09:00 A | 2019-04-03 11:30 A | 96 | 100% |  |  | 2019-04-01 09:00 | 2019-04-01 15:00 | start no earlier than 2019-04-03 09:00 | 0.5h | 0.5h |
| 99 | 3.5.7.14 | SubAreas indices 13,14 e 18 | 0.5d? | 2019-04-03 09:00 A | 2019-04-03 11:30 A |  | 100% |  |  | 2019-04-01 09:00 | 2019-04-01 15:00 | start no earlier than 2019-04-03 09:00 | 0.25h | 0.25h |
| 100 | 3.5.7.15 | subArea de indice 24 - acampamento de exilados | 1.5d? | 2019-04-04 09:00 A | 2019-04-05 15:00 A |  | 100% |  |  | 2019-04-01 09:00 | 2019-04-02 15:00 | start no earlier than 2019-04-04 09:00 | 3.5h | 3.5h |
| 101 | 3.5.7.16 | subAreas indices 16,23 e 20 | 0.5d? | 2019-04-05 12:30 A | 2019-04-05 15:00 A |  | 100% |  |  | 2019-04-02 09:00 | 2019-04-02 15:00 | start no earlier than 2019-04-05 12:30 | 1h | 1h |
| 102 | 3.5.7.17 | subArea caminho do Chefe e Chefe | 1.5d? | 2019-04-08 09:00 A | 2019-04-12 11:30 A |  | 100% |  |  | 2019-04-03 09:00 | 2019-04-03 15:00 | start no earlier than 2019-04-08 09:00 | 2h | 2h |
| 103 | 3.5.8 | **Complementos da Área 1** | 2d | 2019-04-23 09:00 | 2019-04-24 15:00 |  | 100% | 2019-04-23 12:30 | 2019-05-01 15:00 |  |  |  | 6.5h | 6.5h |
| 104 | 3.5.8.1 | Herika no acampamento | 2d? | 2019-04-23 12:30 A | 2019-05-01 15:00 A |  | 100% |  |  |  |  | start no earlier than 2019-04-23 12:30 | 3.5h | 3.5h |
| 105 | 3.5.8.2 | Capsula no Acampamento | 0.5d? | 2019-04-23 12:30 A | 2019-04-23 15:00 A |  | 100% |  |  |  |  | start no earlier than 2019-04-23 12:30 | 0.5h | 0.5h |
| 106 | 3.5.8.3 | Terminar Itens disponiveis com Herika | 1d? | 2019-04-26 09:00 A | 2019-04-29 11:30 A |  | 100% |  |  |  |  | start no earlier than 2019-04-26 09:00 | 2.5h | 2.5h |
| 107 | 3.6 | **Inserção de som e musica baseados na area 1** | 3.6d? | 2019-04-13 09:00 A | 2019-04-16 15:00 A |  | 100% |  |  |  |  |  | 5.7h | 5.7h |
| 108 | 3.6.1 | **Musicas** | 0.6d? | 2019-04-13 09:00 A | 2019-04-13 12:00 A |  | 100% |  |  |  |  |  | 0.4h | 0.4h |
| 109 | 3.6.1.1 | Musica da Intro | 0.6d? | 2019-04-13 09:00 A | 2019-04-13 12:00 A |  | 100% |  |  |  |  | start no earlier than 2019-04-13 09:00 | 0.1h | 0.1h |
| 110 | 3.6.1.2 | musica standar da aventura | 0.6d? | 2019-04-13 09:00 A | 2019-04-13 12:00 A |  | 100% |  |  |  |  | start no earlier than 2019-04-13 09:00 | 0.1h | 0.1h |
| 111 | 3.6.1.3 | musica do acampamento | 0.6d? | 2019-04-13 09:00 A | 2019-04-13 12:00 A |  | 100% |  |  |  |  | start no earlier than 2019-04-13 09:00 | 0.1h | 0.1h |
| 112 | 3.6.1.4 | tema do Tyron/Tales | 0.6d? | 2019-04-13 09:00 A | 2019-04-13 12:00 A |  | 100% |  |  |  |  | start no earlier than 2019-04-13 09:00 | 0.1h | 0.1h |

| ID | WBS | Task | Duration | Start | Finish | Complete | Remaining | Actual start | Baseline start | Baseline finish | Baseline duration | Baseline 1 start | Baseline 1 finish | Total slack | Constraint | Work | Actual work |
| --- | --- | --- | --- | --- | --- | --- | --- | --- | --- | --- | --- | --- | --- | --- | --- | --- | --- |
| 113 | 3.6.2 | **Efeitos Sonoros** | 3.6d? | 2019-04-13 09:00 A | 2019-04-16 15:00 A | 100% |  |  |  |  |  |  |  |  |  | 5.3h | 5.3h |
| 114 | 3.6.2.1 | som da espada | 0.6d? | 2019-04-13 09:00 A | 2019-04-13 12:00 A | 100% |  |  |  |  |  |  |  |  | start no earlier than 2019-04-13 09:00 | 0.1h | 0.1h |
| 115 | 3.6.2.2 | som do aplica dano | 0.6d? | 2019-04-13 09:00 A | 2019-04-13 12:00 A | 100% |  |  |  |  |  |  |  |  | start no earlier than 2019-04-13 09:00 | 0.1h | 0.1h |
| 116 | 3.6.2.3 | som do recebe dano | 0.6d? | 2019-04-13 09:00 A | 2019-04-13 12:00 A | 100% |  |  |  |  |  |  |  |  | start no earlier than 2019-04-13 09:00 | 0.1h | 0.1h |
| 117 | 3.6.2.4 | som da false wall | 0.6d? | 2019-04-13 09:00 A | 2019-04-13 12:00 A | 100% |  |  |  |  |  |  |  |  | start no earlier than 2019-04-13 09:00 | 0.1h | 0.1h |
| 118 | 3.6.2.5 | som do dash | 0.6d? | 2019-04-13 09:00 A | 2019-04-13 12:00 A | 100% |  |  |  |  |  |  |  |  | start no earlier than 2019-04-13 09:00 | 0.1h | 0.1h |
| 119 | 3.6.2.6 | som do pulo | 0.6d? | 2019-04-13 09:00 A | 2019-04-13 12:00 A | 100% |  |  |  |  |  |  |  |  | start no earlier than 2019-04-13 09:00 | 0.1h | 0.1h |
| 120 | 3.6.2.7 | som do pulo duplo | 0.6d? | 2019-04-13 09:00 A | 2019-04-13 12:00 A | 100% |  |  |  |  |  |  |  |  | start no earlier than 2019-04-13 09:00 | 0.1h | 0.1h |
| 121 | 3.6.2.8 | som da magia | 0.6d? | 2019-04-13 09:00 A | 2019-04-13 12:00 A | 100% |  |  |  |  |  |  |  |  | start no earlier than 2019-04-13 09:00 | 0.1h | 0.1h |
| 122 | 3.6.2.9 | som do down arrow jump | 0.6d? | 2019-04-13 09:00 A | 2019-04-13 12:00 A | 100% |  |  |  |  |  |  |  |  | start no earlier than 2019-04-13 09:00 | 0.1h | 0.1h |
| 123 | 3.6.2.10 | vinhetaDoCheckPoint | 1d? | 2019-04-13 13:00 A | 2019-04-13 18:00 A | 100% |  |  |  |  |  |  |  |  | start no earlier than 2019-04-13 13:00 | 0.1h | 0.1h |
| 124 | 3.6.2.11 | som do permanever no CheckPoint | 1d? | 2019-04-13 13:00 A | 2019-04-13 18:00 A | 100% |  |  |  |  |  |  |  |  | start no earlier than 2019-04-13 13:00 | 0.1h | 0.1h |
| 125 | 3.6.2.12 | som do dano fatal | 1d? | 2019-04-13 13:00 A | 2019-04-13 18:00 A | 100% |  |  |  |  |  |  |  |  | start no earlier than 2019-04-13 13:00 | 0.1h | 0.1h |
| 126 | 3.6.2.13 | som do losangulo finalizador(Morte) | 1d? | 2019-04-13 13:00 A | 2019-04-13 18:00 A | 100% |  |  |  |  |  |  |  |  | start no earlier than 2019-04-13 13:00 | 0.1h | 0.1h |
| 127 | 3.6.2.14 | sons da HUD Hexagonos | 0.5d? | 2019-04-15 12:30 A | 2019-04-15 15:00 A | 100% |  |  |  |  |  |  |  |  | start no earlier than 2019-04-15 12:30 | 0.2h | 0.2h |
| 128 | 3.6.2.15 | apito do menu Suspenso | 0.5d? | 2019-04-15 12:30 A | 2019-04-15 15:00 A | 100% |  |  |  |  |  |  |  |  | start no earlier than 2019-04-15 12:30 | 0.2h | 0.2h |
| 129 | 3.6.2.16 | som das barreiras de pedrinhas | 0.5d? | 2019-04-15 12:30 A | 2019-04-15 15:00 A | 100% |  |  |  |  |  |  |  |  | start no earlier than 2019-04-15 12:30 | 0.2h | 0.2h |
| 130 | 3.6.2.17 | som do ataque em falso contra as barreiras | 0.5d? | 2019-04-15 12:30 A | 2019-04-15 15:00 A | 100% |  |  |  |  |  |  |  |  | start no earlier than 2019-04-15 12:30 | 0.2h | 0.2h |
| 131 | 3.6.2.18 | som para saida do checkPoint | 0.5d? | 2019-04-15 12:30 A | 2019-04-15 15:00 A | 100% |  |  |  |  |  |  |  |  | start no earlier than 2019-04-15 12:30 | 0.2h | 0.2h |
| 132 | 3.6.2.19 | som dos losangulos | 0.5d? | 2019-04-16 09:00 A | 2019-04-16 11:30 A | 100% |  |  |  |  |  |  |  |  | start no earlier than 2019-04-16 09:00 | 1h | 1h |
| 133 | 3.6.2.20 | musica e sons dos inimigos atiradores na primeira armadilha | 0.5d? | 2019-04-16 09:00 A | 2019-04-16 11:30 A | 100% |  |  |  |  |  |  |  |  | start no earlier than 2019-04-16 09:00 | 1h | 1h |
| 134 | 3.6.2.21 | vinheta de item importante pego | 0.5d? | 2019-04-16 12:30 A | 2019-04-16 15:00 A | 100% |  |  |  |  |  |  |  |  | start no earlier than 2019-04-16 12:30 | 1h | 1h |
| 135 | 3.7 | **Área 2** | 24.2d | 2019-05-03 09:00 | 2019-06-03 15:00 | 71% | 7.08d | 2019-05-02 12:30 | 2019-03-27 09:00 | 2019-04-03 15:00 | 6d? | 2019-04-03 09:00 | 2019-04-03 15:00 |  |  | 61.25h | 59.67h |
| 136 | 3.7.1 | **implementação dos Inimigos** | 16.1d? | 2019-05-03 09:00 A | 2019-05-24 11:30 | 77% | 3.7d? |  |  |  |  |  |  | 231.1d |  | 17.5h | 17.5h |
| 137 | 3.7.1.1 | I - Escondidinho | 0.5d? | 2019-05-09 09:00 A | 2019-05-09 11:30 A | 100% |  |  |  |  |  |  |  |  | start no earlier than 2019-05-09 09:00 | 1h | 1h |
| 138 | 3.7.1.2 | II - Investidor Local | 0.5d? | 2019-05-09 12:30 A | 2019-05-09 15:00 A | 100% |  |  |  |  |  |  |  |  | start no earlier than 2019-05-09 12:30 | 1h | 1h |
| 139 | 3.7.1.3 | III - Borrifador | 1d? | 2019-05-10 12:30 A | 2019-05-13 11:30 A | 100% |  |  |  |  |  |  |  |  | start no earlier than 2019-05-10 12:30 | 2.5h | 2.5h |
| 140 | 3.7.1.4 | IV - Atirador X | 1.1d? | 2019-05-15 09:00 A | 2019-05-18 12:00 A | 100% |  |  |  |  |  |  |  |  | start no earlier than 2019-05-15 09:00 | 1.5h | 1.5h |
| 141 | 3.7.1.5 | V - Mordedor escondido | 0.5d? | 2019-05-20 12:30 A | 2019-05-20 15:00 A | 100% |  |  |  |  |  |  |  |  | start no earlier than 2019-05-20 12:30 | 2h | 2h |
| 142 | 3.7.1.6 | VI - Voador Investidor | 1d? | 2019-05-13 09:00 A | 2019-05-14 15:00 A | 100% |  |  |  |  |  |  |  |  | start no earlier than 2019-05-13 09:00 | 1.5h | 1.5h |
| 143 | 3.7.1.7 | VII - Guerreiro Local | 1d? | 2019-05-22 12:30 A | 2019-05-23 11:30 A | 100% |  |  |  |  |  |  |  |  | start no earlier than 2019-05-22 12:30 | 4.5h | 4.5h |
| 144 | 3.7.1.8 | VIII - impulso Surpresa | 0.6d? | 2019-05-18 09:00 A | 2019-05-18 12:00 A | 100% |  |  |  |  |  |  |  |  | start no earlier than 2019-05-18 09:00 | 1.5h | 1.5h |
| 145 | 3.7.1.9 | IX - Couraça nadadora | 1d? | 2019-05-03 09:00 | 2019-05-03 15:00 |  |  |  |  |  |  |  |  | 246.2d |  |  |  |
| 146 | 3.7.1.10 | X - Couraça voadora | 1d? | 2019-05-03 09:00 | 2019-05-03 15:00 |  |  |  |  |  |  |  |  | 246.2d |  |  |  |
| 147 | 3.7.1.11 | XI - Fixo Atirador | 0.5d? | 2019-05-24 09:00 A | 2019-05-24 11:30 A | 100% |  |  |  |  |  |  |  |  | start no earlier than 2019-05-24 09:00 | 2h | 2h |
| 148 | 3.7.2 | Implementação do chefe: O mago da seta sombria | 2d? | 2019-05-31 12:30 A | 2019-06-05 15:00 A | 100% |  |  |  |  |  |  |  |  | start no earlier than 2019-05-31 12:30 | 8h | 8h |
| 149 | 3.7.3 | posicionamento e implementação de itens | 1d? | 2019-05-15 12:30 A | 2019-05-17 15:00 | 35% | 0.65d? |  |  |  |  |  |  | 243.2d | start no earlier than 2019-05-15 12:30 | 2.5h | 1.05h |
| 150 | 3.7.4 | Criação dos tiles e artes | 1d? | 2019-05-02 12:30 A | 2019-05-22 11:30 | 75% | 0.25d? |  |  |  |  |  |  | 240.1d | start no earlier than 2019-05-02 12:30 | 0.5h | 0.38h |

Notes:
- 131: Som utilizado: XP108-Heal04

| ID | WBS | Task | Duration | Start | Finish | Complete | Remaining | Baseline start | Baseline finish | Baseline duration | Baseline 1 start | Baseline 1 finish | Total slack | Constraint | Work | Actual work |
| --- | --- | --- | --- | --- | --- | --- | --- | --- | --- | --- | --- | --- | --- | --- | --- | --- |
| 151 | 3.7.5 | **Construção do Cenario** | 26.2d? | 2019-05-03 09:00 A | 2019-06-05 15:00 | 66% | 8.88d? |  |  |  |  |  | 221d |  | 32.75h | 32.75h |
| 152 | 3.7.5.1 | Intro | 1d? | 2019-05-03 09:00 A | 2019-05-09 11:30 A | 100% |  |  |  |  |  |  |  |  | 2h | 2h |
| 153 | 3.7.5.2 | Apresentação dos inimigos basicos | 1d? | 2019-05-09 12:30 A | 2019-05-13 11:30 A | 100% |  |  |  |  |  |  |  | start no earlier than 2019-05-09 12:30 | 1.5h | 1.5h |
| 154 | 3.7.5.3 | Preparação para a subida | 1.5d? | 2019-05-13 12:30 A | 2019-05-15 15:00 A | 100% |  |  |  |  |  |  |  | start no earlier than 2019-05-13 12:30 | 3.5h | 3.5h |
| 155 | 3.7.5.4 | Subida | 1d? | 2019-05-16 12:30 A | 2019-05-17 11:30 A | 100% |  |  |  |  |  |  |  | start no earlier than 2019-05-16 12:30 | 4h | 4h |
| 156 | 3.7.5.5 | CheckPOintDoAquifero | 0.5d? | 2019-05-17 09:00 A | 2019-05-17 11:30 A | 100% |  |  |  |  |  |  |  | start no earlier than 2019-05-17 09:00 | 0.5h | 0.5h |
| 157 | 3.7.5.6 | plataformas para explorar Inimigo IV | 0.5d? | 2019-05-17 12:30 A | 2019-05-17 15:00 A | 100% |  |  |  |  |  |  |  | start no earlier than 2019-05-17 12:30 | 2.5h | 2.5h |
| 158 | 3.7.5.7 | Desafio com Inimigo VIII | 0.6d? | 2019-05-18 09:00 A | 2019-05-18 12:00 A | 100% |  |  |  |  |  |  |  | start no earlier than 2019-05-18 09:00 | 1h | 1h |
| 159 | 3.7.5.8 | Surpresas com Inimigo V | 0.5d? | 2019-05-20 12:30 A | 2019-05-20 15:00 A | 100% |  |  |  |  |  |  |  | start no earlier than 2019-05-20 12:30 | 0.5h | 0.5h |
| 160 | 3.7.5.9 | Descida com espinhos | 0.5d? | 2019-05-22 09:00 A | 2019-05-22 11:30 A | 100% |  |  |  |  |  |  |  | start no earlier than 2019-05-22 09:00 | 1.75h | 1.75h |
| 161 | 3.7.5.10 | Retorno do Chefe | 0.6d? | 2019-05-25 09:00 A | 2019-05-25 12:00 A | 100% |  |  |  |  |  |  |  | start no earlier than 2019-05-25 09:00 | 3h | 3h |
| 162 | 3.7.5.11 | Desafio com Inimigo VII | 1d? | 2019-05-22 12:30 A | 2019-05-23 11:30 A | 100% |  |  |  |  |  |  |  | start no earlier than 2019-05-22 12:30 | 1.5h | 1.5h |
| 163 | 3.7.5.12 | Mais descida com espinhos | 0.5d? | 2019-05-23 12:30 A | 2019-05-23 15:00 A | 100% |  |  |  |  |  |  |  | start no earlier than 2019-05-23 12:30 | 2.5h | 2.5h |
| 164 | 3.7.5.13 | Preludio da Intervenção dos 80 tiros | 0.5d? | 2019-05-24 09:00 A | 2019-05-24 11:30 A | 100% |  |  |  |  |  |  |  | start no earlier than 2019-05-24 09:00 | 0.5h | 0.5h |
| 165 | 3.7.5.14 | Inimigos opcionais do tipo VII | 0.5d? | 2019-05-24 12:30 A | 2019-05-24 15:00 A | 100% |  |  |  |  |  |  |  | start no earlier than 2019-05-24 12:30 | 1.5h | 1.5h |
| 166 | 3.7.5.15 | Corredeira de pedras rumo ao chefe | 0.5d? | 2019-05-28 12:30 A | 2019-05-28 15:00 A | 100% |  |  |  |  |  |  |  | start no earlier than 2019-05-28 12:30 | 3.5h | 3.5h |
| 167 | 3.7.5.16 | Zona do Chefe | 1d? | 2019-05-31 12:30 A | 2019-06-05 15:00 A | 100% |  |  |  |  |  |  |  | start no earlier than 2019-05-31 12:30 | 3h | 3h |
| 168 | 3.7.5.17 | Área de itens pós chefe | 1d? | 2019-05-03 09:00 | 2019-05-03 15:00 |  |  |  |  |  |  |  | 246.2d |  |  |  |
| 169 | 3.7.5.18 | Desafio com Inimigos IX | 1d? | 2019-05-03 09:00 | 2019-05-03 15:00 |  |  |  |  |  |  |  | 246.2d |  |  |  |
| 170 | 3.7.5.19 | Desafio com Inimigos X | 1d? | 2019-05-03 09:00 | 2019-05-03 15:00 |  |  |  |  |  |  |  | 246.2d |  |  |  |
| 171 | 3.7.5.20 | Local de Itens subarea20 | 1d? | 2019-05-03 09:00 | 2019-05-03 15:00 |  |  |  |  |  |  |  | 246.2d |  |  |  |
| 172 | 3.7.5.21 | Conexão de caminhos | 1d? | 2019-05-03 09:00 | 2019-05-03 15:00 |  |  |  |  |  |  |  | 246.2d |  |  |  |
| 173 | 3.7.5.22 | Desafio das escadas multicoloridas | 1d? | 2019-05-03 09:00 | 2019-05-03 15:00 |  |  |  |  |  |  |  | 246.2d |  |  |  |
| 174 | 3.8 | Área 3 | 23d? | 2019-06-05 09:00 | 2019-07-05 15:00 |  |  | 2019-04-03 09:00 | 2019-04-10 15:00 | 6d? | 2019-04-03 09:00 | 2019-04-10 15:00 | 199d | finish no earlier than 2019-07-05 15:00 |  |  |
| 175 | 3.9 | Área 4 | 24d? | 2019-07-08 09:00 | 2019-08-08 15:00 |  |  | 2019-04-10 09:00 | 2019-04-17 15:00 | 6d? | 2019-04-10 09:00 | 2019-04-17 15:00 | 175d | finish no earlier than 2019-08-08 15:00 |  |  |
| 176 | 3.10 | Área 5 | 24d? | 2019-08-12 09:00 | 2019-09-12 15:00 |  |  | 2019-04-17 09:00 | 2019-04-24 15:00 | 6d? | 2019-04-17 09:00 | 2019-04-24 15:00 | 150d | finish no earlier than 2019-09-12 15:00 |  |  |
| 177 | 3.11 | Área 6 | 23d? | 2019-09-16 09:00 | 2019-10-16 15:00 |  |  | 2019-04-24 09:00 | 2019-05-01 15:00 | 6d? | 2019-04-24 09:00 | 2019-05-01 15:00 | 126d | finish no earlier than 2019-10-16 15:00 |  |  |
| 178 | 3.12 | Área 7 | 22d? | 2019-10-18 09:00 | 2019-11-18 15:00 |  |  | 2019-05-01 09:00 | 2019-05-08 15:00 | 6d? | 2019-05-01 09:00 | 2019-05-08 15:00 | 103d | finish no earlier than 2019-11-18 15:00 |  |  |
| 179 | 3.13 | Área 8 | 23d? | 2019-11-20 09:00 | 2019-12-20 15:00 |  |  | 2019-05-08 09:00 | 2019-05-15 15:00 | 6d? | 2019-05-08 09:00 | 2019-05-15 15:00 | 79d | finish no earlier than 2019-12-20 15:00 |  |  |
| 180 | 3.14 | Área 9 | 23d? | 2020-01-02 09:00 | 2020-02-03 15:00 |  |  | 2019-05-15 09:00 | 2019-05-22 15:00 | 6d? | 2019-05-15 09:00 | 2019-05-22 15:00 | 48d | finish no earlier than 2020-02-03 15:00 |  |  |
| 181 | 3.15 | Área 10 | 22d? | 2020-02-05 09:00 | 2020-03-05 15:00 |  |  | 2019-05-22 09:00 | 2019-05-29 15:00 | 6d? | 2019-05-22 09:00 | 2019-05-29 15:00 | 25d | finish no earlier than 2020-03-05 15:00 |  |  |
| 182 | 3.16 | Área 11 | 24d? | 2020-03-09 09:00 | 2020-04-09 15:00 |  |  | 2019-05-29 09:00 | 2019-06-05 15:00 | 6d? | 2019-05-29 09:00 | 2019-06-05 15:00 | 0d | finish no earlier than 2020-04-09 15:00 |  |  |

| ID | WBS | Task | Duration | Start | Finish | Predecessors | Baseline start | Baseline finish | Baseline duration | Baseline 1 start | Baseline 1 finish | Total slack | Constraint |
| --- | --- | --- | --- | --- | --- | --- | --- | --- | --- | --- | --- | --- | --- |
| 183 | 4 | **Testes/Correções/Balanceamento** | 215d | 2019-06-03 09:00 | 2020-03-27 15:00 |  | 2019-04-10 09:00 | 2019-06-19 15:00 | 51d? | 2019-04-10 09:00 | 2019-06-19 15:00 |  |  |
| 184 | 4.1 | Testes com conhecidos | 16d? | 2019-04-11 13:00 | 2019-05-01 15:00 |  | 2019-04-10 09:00 | 2019-05-01 15:00 | 16d? | 2019-04-10 09:00 | 2019-05-01 15:00 | 255.2d | finish no earlier than 2019-05-01 15:00 |
| 185 | 4.2 | Correções | 6d? | 2019-06-05 09:00 | 2019-06-12 15:00 |  | 2019-06-05 09:00 | 2019-06-12 15:00 | 6d? | 2019-06-05 09:00 | 2019-06-12 15:00 | 223d | finish no earlier than 2019-06-12 15:00 |
| 186 | 4.3 | Balanceamento | 6d? | 2019-06-12 09:00 | 2019-06-19 15:00 |  | 2019-06-12 09:00 | 2019-06-19 15:00 | 6d? | 2019-06-12 09:00 | 2019-06-19 15:00 | 218d | finish no earlier than 2019-06-19 15:00 |
| 187 | 5 | **Publicação/Monetização/Polimento** | 7d? | 2020-04-10 09:00 | 2020-04-20 15:00 | 27 | 2019-06-19 09:00 | 2019-06-28 15:00 | 8d? | 2019-06-19 09:00 | 2019-06-28 15:00 | 0d |  |
| 188 | 5.1 | Monetização | 4d? | 2020-04-10 09:00 | 2020-04-15 15:00 |  | 2019-06-19 09:00 | 2019-06-24 15:00 | 4d? | 2019-06-19 09:00 | 2019-06-24 15:00 | 3d | finish no earlier than 2019-06-24 15:00 |
| 189 | 5.2 | Polimento | 7d? | 2020-04-10 09:00 | 2020-04-20 15:00 |  | 2019-06-19 09:00 | 2019-06-27 15:00 | 7d? | 2019-06-19 09:00 | 2019-06-27 15:00 | 0d | finish no earlier than 2019-06-27 15:00 |
| 190 | 5.3 | Publicação | 4d? | 2020-04-10 09:00 | 2020-04-15 15:00 |  | 2019-06-25 09:00 | 2019-06-28 15:00 | 4d? | 2019-06-25 09:00 | 2019-06-28 15:00 | 3d | finish no earlier than 2019-06-28 15:00 |
